Schedule from MS Project, 2022-02-07 to 2022-04-26, costs in Kč.

## Calendars

- Standard: Mon-Fri 08:00-12:00, 13:00-17:00; Sat-Sun off.

## Resources

| Resource | Group | Rate |
| --- | --- | --- |
| Eliáš Radoslav | Rizeni | 400 |
| Gladiš Damián | doku | 250 |
| Grünwald Adam | analyza | 300 |
| Jahoda Vojtěch | analyza | 300 |
| Jeřábek František | dev | 350 |
| Kamenický Daniel | flex | 150 |
| Lorenc Jan | analyza | 300 |
| Ondrušková Magdaléna | dev | 350 |
| Smetana Martin | navrh | 200 |
| Špavor Dávid | dev | 350 |
| Rozprým Dalimil | test | 250 |

## Schedule

| ID | WBS | Task | Type | Duration | Start | Finish | Predecessors | Total slack | Free slack | Constraint | Resources | Work | Cost |
| --- | --- | --- | --- | --- | --- | --- | --- | --- | --- | --- | --- | --- | --- |
| 1 | 1 | **Cely projekt** |  | 56.12d | 2022-02-07 08:00 | 2022-04-26 09:00 |  | 0d |  |  |  | 958.25h | 288,540 |
| 2 | 1.1 | **Sestavení Týmu a plán Komunikace** |  | 1.01d | 2022-02-07 08:00 | 2022-02-08 08:06 |  | 18.89d |  |  |  | 59.1h | 17,520 |
| 3 | 1.1.1 | Sestavení týmu |  | 3h | 2022-02-07 08:00 | 2022-02-07 11:00 |  | 18.89d | 0d |  | Eliáš Radoslav | 3h | 1,200 |
| 4 | 1.1.2 | Seznámení v týmu |  | 1h | 2022-02-07 11:00 | 2022-02-07 12:00 | 3 | 18.89d | 0d |  | Eliáš Radoslav; Gladiš Damián; Grünwald Adam; Jahoda Vojtěch; Jeřábek František; Kamenický Daniel; Lorenc Jan; Ondrušková Magdaléna; Rozprým Dalimil; Smetana Martin; Špavor Dávid | 11h | 3,200 |
| 5 | 1.1.3 | Volba vedoucího týmu |  | 0.1h | 2022-02-07 13:00 | 2022-02-07 13:06 | 4 | 18.89d | 0d |  | Eliáš Radoslav; Gladiš Damián; Grünwald Adam; Jahoda Vojtěch; Jeřábek František; Kamenický Daniel; Lorenc Jan; Ondrušková Magdaléna; Rozprým Dalimil; Smetana Martin; Špavor Dávid | 1.1h | 320 |
| 6 | 1.1.4 | Výběr jména týmu |  | 2h | 2022-02-07 13:06 | 2022-02-07 15:06 | 5 | 18.89d | 0d |  | Eliáš Radoslav; Gladiš Damián; Grünwald Adam; Jahoda Vojtěch; Jeřábek František; Kamenický Daniel; Lorenc Jan; Ondrušková Magdaléna; Rozprým Dalimil; Smetana Martin; Špavor Dávid | 22h | 6,400 |
| 7 | 1.1.5 | Rozdělení úkolů v týmu |  | 2h | 2022-02-07 15:06 | 2022-02-08 08:06 | 6 | 18.89d | 0d |  | Eliáš Radoslav; Gladiš Damián; Grünwald Adam; Jahoda Vojtěch; Jeřábek František; Kamenický Daniel; Lorenc Jan; Ondrušková Magdaléna; Rozprým Dalimil; Smetana Martin; Špavor Dávid | 22h | 6,400 |
| 8 | 1.2 | Tým sestaven | milestone | 0h | 2022-02-08 08:06 | 2022-02-08 08:06 | 7 | 18.89d | 0d |  |  |  |  |
| 9 | 1.3 | **Plán komunikace** |  | 0.91d | 2022-02-08 08:06 | 2022-02-08 16:21 | 8 | 18.89d |  |  |  | 69.75h | 20,400 |
| 10 | 1.3.1 | Vzájemná výměna kontaktů v týmu |  | 1h | 2022-02-08 08:06 | 2022-02-08 09:06 |  | 18.89d | 0d |  | Eliáš Radoslav; Gladiš Damián; Grünwald Adam; Jahoda Vojtěch; Jeřábek František; Kamenický Daniel; Lorenc Jan; Ondrušková Magdaléna; Rozprým Dalimil; Smetana Martin; Špavor Dávid | 11h | 3,200 |
| 11 | 1.3.2 | Dohodnutí primárního hromadného komunikačního prostředku |  | 2h | 2022-02-08 09:06 | 2022-02-08 11:06 | 10 | 18.89d | 0d |  | Eliáš Radoslav; Gladiš Damián; Grünwald Adam; Jahoda Vojtěch; Jeřábek František; Kamenický Daniel; Lorenc Jan; Ondrušková Magdaléna; Rozprým Dalimil; Smetana Martin; Špavor Dávid | 22h | 6,400 |
| 12 | 1.3.3 | Naplánování první schůzky týmu |  | 2h | 2022-02-08 11:06 | 2022-02-08 14:06 | 11 | 18.89d | 0d |  | Eliáš Radoslav; Gladiš Damián; Grünwald Adam; Jahoda Vojtěch; Jeřábek František; Kamenický Daniel; Lorenc Jan; Ondrušková Magdaléna; Rozprým Dalimil; Smetana Martin; Špavor Dávid | 22h | 6,400 |
| 13 | 1.3.4 | **Provedení první schůzky týmu** |  | 0.16d | 2022-02-08 14:06 | 2022-02-08 15:21 | 12 | 18.89d | 0d |  |  | 13.75h | 4,000 |
| 14 | 1.3.4.1 | Dohodnutí pravidelnosti setkávání |  | 0.25h | 2022-02-08 14:06 | 2022-02-08 14:21 |  | 18.89d | 0d |  | Eliáš Radoslav; Gladiš Damián; Grünwald Adam; Jahoda Vojtěch; Jeřábek František; Kamenický Daniel; Lorenc Jan; Ondrušková Magdaléna; Rozprým Dalimil; Smetana Martin; Špavor Dávid | 2.75h | 800 |
| 15 | 1.3.4.2 | Vytvoření předběžného plánu vypracování |  | 1h | 2022-02-08 14:21 | 2022-02-08 15:21 | 14 | 18.89d |  |  | Eliáš Radoslav; Gladiš Damián; Grünwald Adam; Jahoda Vojtěch; Jeřábek František; Kamenický Daniel; Lorenc Jan; Ondrušková Magdaléna; Rozprým Dalimil; Smetana Martin; Špavor Dávid | 11h | 3,200 |
| 16 | 1.3.5 | Ustanovení komunikačního kanálu se zákazníkem |  | 0.5h | 2022-02-08 15:21 | 2022-02-08 15:51 | 13 | 18.89d | 0d |  | Eliáš Radoslav | 0.5h | 200 |
| 17 | 1.3.6 | Naplánování první schůzky se zákazníkem |  | 0.5h | 2022-02-08 15:51 | 2022-02-08 16:21 | 16 | 18.89d | 0d |  | Eliáš Radoslav | 0.5h | 200 |
| 18 | 1.4 | Naplánovaná komunikační matice | milestone | 0h | 2022-02-08 16:21 | 2022-02-08 16:21 | 17 | 18.89d | 0d | finish no earlier than 2022-02-07 14:00 |  |  |  |
| 19 | 1.5 | **Analýza problematiky a zadání projektu** |  | 1.06d | 2022-02-08 16:21 | 2022-02-09 16:51 | 18 | 18.89d | 0d |  |  | 12.5h | 3,600 |
| 20 | 1.5.1 | Extrakce klíčových bodů zadání |  | 4h | 2022-02-08 16:21 | 2022-02-09 11:21 |  | 18.89d | 0d |  | Jahoda Vojtěch | 4h | 1,200 |
| 21 | 1.5.2 | Vytvoření nezávazného seznamu činností |  | 1.5h | 2022-02-09 11:21 | 2022-02-09 13:51 | 20 | 18.89d | 0d |  | Jahoda Vojtěch | 1.5h | 450 |
| 22 | 1.5.3 | Vytvoření prvotního plánu rozpočtu |  | 2h | 2022-02-09 08:21 | 2022-02-09 10:21 | 24 | 19.58d |  |  |  |  |  |
| 23 | 1.5.4 | Vytvoření předběžného plánu práce |  | 3h | 2022-02-09 13:51 | 2022-02-09 16:51 | 21 | 18.89d |  |  | Eliáš Radoslav; Kamenický Daniel | 6h | 1,650 |
| 24 | 1.5.5 | Analýza potřebných zdrojů |  | 1h | 2022-02-08 16:21 | 2022-02-09 08:21 |  | 19.58d | 0d |  | Jahoda Vojtěch | 1h | 300 |
| 25 | 1.6 | Dokončena analýza problematiky | milestone | 0h | 2022-02-09 16:51 | 2022-02-09 16:51 | 19 | 18.89d | 0d | finish no earlier than 2022-02-07 09:00 |  |  |  |

| ID | WBS | Task | Type | Duration | Start | Finish | Predecessors | Total slack | Free slack | Constraint | Resources | Work | Cost |
| --- | --- | --- | --- | --- | --- | --- | --- | --- | --- | --- | --- | --- | --- |
| 26 | 1.7 | **Specifikace požadavků** |  | 1.06d | 2022-02-09 16:51 | 2022-02-11 08:21 | 25 | 19.21d | 0d |  |  | 13.5h | 4,200 |
| 27 | 1.7.1 | Setkání se zákazníkem |  | 1.5h | 2022-02-09 16:51 | 2022-02-10 09:21 |  | 19.21d | 0d |  | Eliáš Radoslav; Jahoda Vojtěch; Lorenc Jan | 4.5h | 1,500 |
| 28 | 1.7.2 | Vypracování neformální specifikace |  | 2h | 2022-02-10 09:21 | 2022-02-10 11:21 | 27 | 19.21d | 0d |  | Lorenc Jan | 2h | 600 |
| 29 | 1.7.3 | Vytvoření diagramu užití |  | 4h | 2022-02-10 11:21 | 2022-02-10 16:21 | 28 | 52.08d | 0d |  | Grünwald Adam | 4h | 1,200 |
| 30 | 1.7.4 | Analýza rizik |  | 2h | 2022-02-10 11:21 | 2022-02-10 14:21 | 28 | 19.21d | 0.25d |  | Grünwald Adam | 2h | 600 |
| 31 | 1.7.5 | Přezkoumání a aktualizace požadavků |  | 1h | 2022-02-10 16:21 | 2022-02-11 08:21 | 30, 29 | 52.08d |  |  | Lorenc Jan | 1h | 300 |
| 32 | 1.8 | Dokončena specifikace požadavků | milestone | 0h | 2022-02-11 08:21 | 2022-02-11 08:21 | 26 | 37.21d |  |  |  |  |  |
| 33 | 1.9 | **Plán práce** |  | 1.12d | 2022-02-09 16:51 | 2022-02-11 08:51 | 25 | 18.89d | 0d |  |  | 27.4h | 8,720 |
| 34 | 1.9.1 | **Vytvoření a rozvržení práce vMS projekt** |  | 1d | 2022-02-09 16:51 | 2022-02-10 16:51 |  | 18.89d | 0d |  |  | 17h | 5,600 |
| 35 | 1.9.1.1 | Vytvoření plánu projektu |  | 5h | 2022-02-09 16:51 | 2022-02-10 13:51 |  | 18.89d | 0d |  | Eliáš Radoslav | 5h | 2,000 |
| 36 | 1.9.1.2 | Vytvoření plánu Implementace |  | 3h | 2022-02-10 13:51 | 2022-02-10 16:51 | 35 | 18.89d | 0d |  | Gladiš Damián; Jeřábek František; Rozprým Dalimil; Špavor Dávid | 12h | 3,600 |
| 37 | 1.9.2 | Odsouhlasení plánu práce |  | 0.5h | 2022-02-10 16:51 | 2022-02-11 08:21 | 36 | 18.96d |  |  | Eliáš Radoslav; Gladiš Damián; Grünwald Adam; Jahoda Vojtěch; Jeřábek František; Kamenický Daniel; Lorenc Jan; Ondrušková Magdaléna; Rozprým Dalimil; Smetana Martin; Špavor Dávid | 5.5h | 1,600 |
| 38 | 1.9.3 | Výběr potřebných technologií |  | 1h | 2022-02-10 16:51 | 2022-02-11 08:51 | 34, 30 | 18.89d |  |  | Gladiš Damián; Jeřábek František; Rozprým Dalimil; Špavor Dávid | 4h | 1,200 |
| 39 | 1.9.4 | Výběr nástroje pro správu verzí |  | 0.1h | 2022-02-10 16:51 | 2022-02-10 16:57 | 34 | 19.01d |  |  | Gladiš Damián; Jeřábek František; Rozprým Dalimil; Špavor Dávid | 0.4h | 120 |
| 40 | 1.9.5 | Volba metodiky vývoje |  | 0.5h | 2022-02-10 16:51 | 2022-02-11 08:21 | 34 | 18.96d |  |  | Eliáš Radoslav | 0.5h | 200 |
| 41 | 1.10 | Dokončen plán práce | milestone | 0h | 2022-02-11 08:51 | 2022-02-11 08:51 | 33 | 18.89d | 18.27d |  |  |  |  |
| 42 | 1.11 | **Návrh systému** |  | 6.5d | 2022-03-09 11:00 | 2022-03-17 16:00 | 41 | 0.62d |  |  |  | 178h | 52,600 |
| 43 | 1.11.1 | **Návrh GUI systému** |  | 2.5d | 2022-03-09 13:00 | 2022-03-11 17:00 |  | 18.5d |  |  |  | 18h | 6,050 |
| 44 | 1.11.1.1 | Vytvoření wireframe |  | 4h | 2022-03-09 13:00 | 2022-03-09 17:00 |  | 19.88d | 0.75d | finish no earlier than 2022-03-09 17:00 | Jeřábek František | 4h | 1,400 |
| 45 | 1.11.1.2 | Prezentace návrhu zákazníkovi |  | 2h | 2022-03-10 15:00 | 2022-03-10 17:00 | 44 | 19.12d | 0.62d | finish no earlier than 2022-03-10 17:00 | Eliáš Radoslav; Jeřábek František; Jahoda Vojtěch; Lorenc Jan | 8h | 2,700 |
| 46 | 1.11.1.3 | Zapracování připomínek zákazníka |  | 3h | 2022-03-11 14:00 | 2022-03-11 17:00 | 45 | 18.5d | 0d | finish no earlier than 2022-03-11 17:00 | Jahoda Vojtěch; Jeřábek František | 6h | 1,950 |
| 47 | 1.11.1.4 | Schválení finální podoby GUI zákazníkem | milestone | 0d | 2022-03-11 17:00 | 2022-03-11 17:00 | 46 | 8.5d | 0d | finish no earlier than 2022-03-11 17:00 |  |  |  |
| 48 | 1.11.2 | **Návrh struktury systému** |  | 3.88d | 2022-03-09 13:00 | 2022-03-15 11:00 |  | 0.5d |  |  |  | 90h | 27,100 |
| 49 | 1.11.2.1 | Rozdělení systému na moduly |  | 4h | 2022-03-09 13:00 | 2022-03-09 17:00 |  | 0.5d |  | finish no earlier than 2022-03-09 17:00 | Gladiš Damián; Ondrušková Magdaléna; Rozprým Dalimil | 12h | 3,400 |
| 50 | 1.11.2.2 | Specifikace jednotlivých modulů a určení jejich funkcí |  | 4h | 2022-03-10 13:00 | 2022-03-10 17:00 | 49 | 0d |  | finish no earlier than 2022-03-10 17:00 | Gladiš Damián; Jeřábek František; Ondrušková Magdaléna; Rozprým Dalimil; Špavor Dávid | 20h | 6,200 |
| 51 | 1.11.2.3 | Specifikace komunikace modulů |  | 2h | 2022-03-10 15:00 | 2022-03-10 17:00 | 49 | 0d |  | finish no earlier than 2022-03-10 17:00 | Gladiš Damián; Jeřábek František; Ondrušková Magdaléna; Rozprým Dalimil; Špavor Dávid | 10h | 3,100 |

| ID | WBS | Task | Type | Duration | Start | Finish | Predecessors | Total slack | Free slack | Constraint | Resources | Work | Cost |
| --- | --- | --- | --- | --- | --- | --- | --- | --- | --- | --- | --- | --- | --- |
| 52 | 1.11.2.4 | **Popsání návrhu** |  | 2.38d | 2022-03-11 08:00 | 2022-03-15 11:00 |  | 0d |  |  |  | 48h | 14,400 |
| 53 | 1.11.2.4.1 | Dokumentace |  | 1d | 2022-03-14 11:00 | 2022-03-15 11:00 | 54 | 29.75d |  | finish no earlier than 2022-03-14 17:00 | Gladiš Damián | 8h | 2,000 |
| 54 | 1.11.2.4.2 | Diagramy |  | 1.38d | 2022-03-11 08:00 | 2022-03-14 11:00 | 51, 50 | 0d |  | finish no earlier than 2022-03-11 17:00 | Gladiš Damián; Jeřábek František; Ondrušková Magdaléna; Rozprým Dalimil; Špavor Dávid | 40h | 12,400 |
| 55 | 1.11.2.5 | Ukončení návrhu struktury systému | milestone | 0d | 2022-03-14 11:00 | 2022-03-14 11:00 | 54 | 0d |  | finish no earlier than 2022-03-11 17:00 |  |  |  |
| 56 | 1.11.3 | **Návrh databáze** |  | 1.62d | 2022-03-09 11:00 | 2022-03-10 17:00 |  | 19.75d |  |  |  | 14h | 3,850 |
| 57 | 1.11.3.1 | Návrh databázového schématu |  | 5h | 2022-03-09 11:00 | 2022-03-09 17:00 |  | 20.5d | 0.75d | finish no earlier than 2022-03-09 17:00 | Smetana Martin; Špavor Dávid | 10h | 2,750 |
| 58 | 1.11.3.2 | Návrh procedur pohledu |  | 2h | 2022-03-10 15:00 | 2022-03-10 17:00 | 57 | 19.75d | 0d | finish no earlier than 2022-03-10 17:00 | Smetana Martin; Špavor Dávid | 4h | 1,100 |
| 59 | 1.11.3.3 | Ukončení návrhu databáze | milestone | 0d | 2022-03-10 17:00 | 2022-03-10 17:00 | 58 | 10.5d | 0d | finish no earlier than 2022-03-10 17:00 |  |  |  |
| 60 | 1.11.4 | **Návrh modulů** |  | 3.5d | 2022-03-14 11:00 | 2022-03-17 16:00 | 55 | 0d |  |  |  | 56h | 15,600 |
| 61 | 1.11.4.1 | Návrh vnitřní struktury modulů |  | 2d | 2022-03-14 11:00 | 2022-03-16 11:00 |  | 0d |  | finish no earlier than 2022-03-14 17:00 | Ondrušková Magdaléna; Smetana Martin | 32h | 8,800 |
| 62 | 1.11.4.2 | **Popsání návrhu** |  | 1.5d | 2022-03-16 11:00 | 2022-03-17 16:00 |  | 0d |  |  |  | 24h | 6,800 |
| 63 | 1.11.4.2.1 | Dokumentace |  | 1d | 2022-03-16 16:00 | 2022-03-17 16:00 | 64 | 0d |  | finish no earlier than 2022-03-16 17:00 | Gladiš Damián | 8h | 2,000 |
| 64 | 1.11.4.2.2 | Diagramy |  | 4h | 2022-03-16 11:00 | 2022-03-16 16:00 | 61 | 0d |  | finish no earlier than 2022-03-15 17:00 | Gladiš Damián; Ondrušková Magdaléna; Rozprým Dalimil; Špavor Dávid | 16h | 4,800 |
| 65 | 1.11.4.3 | ukončení návrhu modulů | milestone | 0d | 2022-03-17 16:00 | 2022-03-17 16:00 | 63 | 0d |  | finish no earlier than 2022-03-16 17:00 |  |  |  |
| 66 | 1.12 | Revize navrhů |  | 2.75d | 2022-03-17 16:00 | 2022-03-31 15:00 | 65, 59, 55, 47 | 17.38d | 0d | finish no earlier than 2022-03-17 17:00 | Gladiš Damián; Jeřábek František; Kamenický Daniel; Ondrušková Magdaléna; Rozprým Dalimil; Špavor Dávid | 48h | 13,600 |
| 67 | 1.13 | Ukončení návrhu systému | milestone | 0d | 2022-03-31 15:00 | 2022-03-31 15:00 | 66 | 17.38d |  | finish no earlier than 2022-03-17 17:00 |  |  |  |
| 68 | 1.14 | **Implementace** |  | 26.5d | 2022-03-11 08:00 | 2022-04-18 12:00 |  | 0d |  |  |  | 248h | 72,400 |
| 69 | 1.14.1 | Implementace jednotlivých modulů systému |  | 7.88d | 2022-03-17 16:00 | 2022-03-29 15:00 | 65 | 9d | 0d | finish no earlier than 2022-03-17 17:00 | Jeřábek František; Špavor Dávid; Kamenický Daniel | 168h | 47,600 |
| 70 | 1.14.2 | Spojení modulů do celistvého systému |  | 2d | 2022-03-29 15:00 | 2022-04-05 12:00 | 69, 71, 73 | 9d |  | finish no earlier than 2022-03-18 17:00 | Ondrušková Magdaléna; Rozprým Dalimil | 32h | 9,600 |
| 71 | 1.14.3 | Implementace GUI |  | 2d | 2022-03-14 11:00 | 2022-03-16 11:00 | 47 | 18.38d | 9.38d | finish no earlier than 2022-03-14 17:00 | Jeřábek František | 16h | 5,600 |
| 72 | 1.14.4 | Zpracování připomínek a aktualizace systému |  | 2d | 2022-04-07 14:00 | 2022-04-18 12:00 | 80 | 0d |  | finish no earlier than 2022-03-22 17:00 | Grünwald Adam; Ondrušková Magdaléna | 16h | 5,200 |
| 73 | 1.14.5 | Implementace databáze |  | 2d | 2022-03-11 08:00 | 2022-03-14 17:00 | 59 | 19.75d | 10.75d | finish no earlier than 2022-03-11 17:00 | Smetana Martin; Špavor Dávid | 16h | 4,400 |
| 74 | 1.14.6 | Ukončení implementace | milestone | 0d | 2022-04-18 12:00 | 2022-04-18 12:00 | 69, 70, 71, 72, 73 | 0d |  | finish no earlier than 2022-03-22 17:00 |  |  |  |
| 75 | 1.15 | **Testování** |  | 24.12d | 2022-03-04 13:00 | 2022-04-07 14:00 |  | 8.88d |  |  |  | 128h | 39,600 |
| 76 | 1.15.1 | Návrh testů jednotlivých modulů |  | 3.12d | 2022-03-17 16:00 | 2022-04-05 14:00 | 65 | 0d |  | finish no earlier than 2022-03-17 17:00 | Rozprým Dalimil; Gladiš Damián; Jeřábek František; Ondrušková Magdaléna; Špavor Dávid | 80h | 24,800 |
| 77 | 1.15.2 | Návrh integračních testů |  | 1d | 2022-03-14 11:00 | 2022-03-15 11:00 | 55 | 15.25d |  | finish no earlier than 2022-03-14 17:00 | Rozprým Dalimil | 8h | 2,000 |
| 78 | 1.15.3 | Návrh akceptačních testů |  | 3d | 2022-03-04 13:00 | 2022-03-09 17:00 |  | 18.62d |  | finish no earlier than 2022-03-09 17:00 | Ondrušková Magdaléna | 24h | 8,400 |
| 79 | 1.15.4 | Otestování systému |  | 1d | 2022-04-05 14:00 | 2022-04-06 14:00 | 76, 77, 78 | 0d |  | finish no earlier than 2022-03-18 17:00 | Gladiš Damián | 8h | 2,000 |
| 80 | 1.15.5 | Popsání výsledků testů |  | 1d | 2022-04-06 14:00 | 2022-04-07 14:00 | 79 | 0d |  | finish no earlier than 2022-03-21 17:00 | Lorenc Jan | 8h | 2,400 |
| 81 | 1.15.6 | Ukončení testování | milestone | 0d | 2022-04-07 14:00 | 2022-04-07 14:00 | 80 | 8.88d |  | finish no earlier than 2022-03-09 17:00 |  |  |  |

| ID | WBS | Task | Type | Duration | Start | Finish | Predecessors | Total slack | Constraint | Resources | Work | Cost |
| --- | --- | --- | --- | --- | --- | --- | --- | --- | --- | --- | --- | --- |
| 82 | 1.16 | **Dokumentace** |  | 27.5d | 2022-03-14 08:00 | 2022-04-20 12:00 |  | 0d |  |  | 80h | 25,600 |
| 83 | 1.16.1 | Vytvoření technické dokumentace |  | 2d | 2022-04-18 13:00 | 2022-04-20 12:00 | 74 | 0d | finish no earlier than 2022-03-23 17:00 | Eliáš Radoslav; Jahoda Vojtěch; Lorenc Jan | 48h | 16,000 |
| 84 | 1.16.2 | Vytvoření manuálu pro uživatele |  | 2d | 2022-03-14 08:00 | 2022-03-15 17:00 | 47 | 25.5d | finish no earlier than 2022-03-14 17:00 | Jahoda Vojtěch; Lorenc Jan | 32h | 9,600 |
| 85 | 1.16.3 | Ukončení dokumentování | milestone | 0d | 2022-04-20 12:00 | 2022-04-20 12:00 | 83, 84 | 0d | finish no earlier than 2022-03-24 17:00 |  |  |  |
| 86 | 1.17 | **Ukončení projektu** |  | 3.62d | 2022-04-20 13:00 | 2022-04-26 09:00 |  | 0d |  |  | 94h | 30,300 |
| 87 | 1.17.1 | **Předání systému zákazníkovi** |  | 1.38d | 2022-04-20 13:00 | 2022-04-21 16:00 |  | 0d |  |  | 35h | 10,700 |
| 88 | 1.17.1.1 | Instalace systému u zákazníka |  | 2h | 2022-04-20 13:00 | 2022-04-20 15:00 | 85, 81, 74 | 1.12d | finish no earlier than 2022-03-25 17:00 | Eliáš Radoslav; Jahoda Vojtěch; Lorenc Jan; Grünwald Adam | 8h | 2,600 |
| 89 | 1.17.1.2 | Zaškolení zákazníka do funkcionality systému |  | 3h | 2022-04-20 15:00 | 2022-04-21 09:00 | 85, 81, 74 | 0.75d | finish no earlier than 2022-03-25 17:00 | Jahoda Vojtěch; Lorenc Jan; Grünwald Adam | 9h | 2,700 |
| 90 | 1.17.1.3 | Zaškolení zaměstnanců zákazníka do systému |  | 6h | 2022-04-21 09:00 | 2022-04-21 16:00 | 85, 81, 74 | 0d | finish no earlier than 2022-03-25 17:00 | Jahoda Vojtěch; Lorenc Jan; Grünwald Adam | 18h | 5,400 |
| 91 | 1.17.2 | Zhodnocení projektu jako celek |  | 1d | 2022-04-21 16:00 | 2022-04-22 16:00 | 87 | 1.25d | finish no earlier than 2022-03-28 17:00 | Eliáš Radoslav; Jahoda Vojtěch; Lorenc Jan | 24h | 8,000 |
| 92 | 1.17.3 | Vytvoření hodnocení jednotlivých členů týmu |  | 3h | 2022-04-22 16:00 | 2022-04-25 10:00 | 87 | 0.88d | finish no earlier than 2022-03-28 17:00 | Eliáš Radoslav | 3h | 1,200 |
| 93 | 1.17.4 | Zapsání seznamu chyb, které se vyskytly vprůběhu projektu |  | 2.25d | 2022-04-21 16:00 | 2022-04-26 09:00 | 87 | 0d | finish no earlier than 2022-03-28 17:00 | Eliáš Radoslav; Grünwald Adam; Jahoda Vojtěch; Lorenc Jan | 32h | 10,400 |
